# AI智能推荐食谱

How a schedule from MS Project changed from version to version. A marks actual dates.

## Version 1 (saved 2020-03-27)

Note of the change: cris3.27

| ID | WBS | Task | Duration | Start | Finish | Predecessors | Total float | Constraint |
| --- | --- | --- | --- | --- | --- | --- | --- | --- |
| 1 | 1 | **启动** | 7d | 2020-03-16 | 2020-03-24 |  |  |  |
| 2 |  | 组件核心团队 | 1d | 2020-03-16 | 2020-03-16 |  | 3d |  |
| 3 |  | 干系人分析 | 2d | 2020-03-17 | 2020-03-18 |  | 1d | start no earlier than 2020-03-17 |
| 4 |  | 里程碑计划 | 1d | 2020-03-19 | 2020-03-19 |  | 0d | start no earlier than 2020-03-19 |
| 5 |  | 制定项目章程 | 2d | 2020-03-20 | 2020-03-23 | 2, 3, 4 | 0d |  |
| 6 |  | 项目启动大会 | 1d | 2020-03-24 | 2020-03-24 | 5 | 0d |  |
| 7 | 2 | **规划** | 26d | 2020-03-25 | 2020-04-29 |  | 0d |  |
| 8 | 2.1 | **规划范围** | 11d | 2020-03-25 | 2020-04-08 |  | 0d |  |
| 9 |  | 制定需求说明书 | 5d | 2020-03-25 | 2020-03-31 | 6 | 0d |  |
| 10 |  | 界面设计 | 3d | 2020-04-01 | 2020-04-03 | 9 | 0d |  |
| 11 |  | 详细计划说明书 | 3d | 2020-04-01 | 2020-04-03 | 9 | 0d |  |
| 12 |  | 范围说明书 | 3d | 2020-03-27 | 2020-03-31 |  | 3d | start no earlier than 2020-03-27 |
| 13 |  | 创建WBS | 2d | 2020-04-06 | 2020-04-07 | 10, 11, 12 | 0d |  |
| 14 |  | 形成范围基准 | 1d | 2020-04-08 | 2020-04-08 | 13 | 0d |  |
| 15 | 2.2 | **规划时间** | 7d | 2020-04-09 | 2020-04-17 |  | 0d |  |
| 16 |  | 排列工作包顺序 | 1d | 2020-04-09 | 2020-04-09 | 14 | 0d |  |
| 17 |  | 估算资源 | 2d | 2020-04-10 | 2020-04-13 | 16 | 0d |  |
| 18 |  | 估算持续时间 | 2d | 2020-04-14 | 2020-04-15 | 17 | 0d |  |
| 19 |  | 制定进度计划 | 1d | 2020-04-16 | 2020-04-16 | 18 | 0d |  |
| 20 |  | 形成进度基准 | 1d | 2020-04-17 | 2020-04-17 | 19 | 0d |  |
| 21 | 2.3 | **规划成本** | 4d | 2020-04-20 | 2020-04-23 |  |  |  |
| 22 |  | 项目成本估算 | 2d | 2020-04-20 | 2020-04-21 | 20 | 0d |  |
| 23 |  | 项目预算 | 1d | 2020-04-22 | 2020-04-22 | 22 | 0d |  |
| 24 |  | 形成范围基准 | 1d | 2020-04-23 | 2020-04-23 | 23 | 0d |  |
| 25 | 2.4 | **规划质量** | 8d | 2020-04-09 | 2020-04-20 |  | 3d |  |
| 26 |  | 制定测试计划 | 2d | 2020-04-09 | 2020-04-10 | 14 | 3d |  |
| 27 |  | 制定测试用例 | 6d | 2020-04-13 | 2020-04-20 | 26 | 3d |  |
| 28 | 2.5 | **规划人力资源** | 4d | 2020-04-14 | 2020-04-17 |  | 4d |  |
| 29 |  | 制定人力资源计划 | 2d | 2020-04-14 | 2020-04-15 | 17 | 4d |  |
| 30 |  | 制定人员配备管理计划 | 2d | 2020-04-16 | 2020-04-17 | 29 | 4d |  |
| 31 | 2.6 | **规划沟通** | 2d | 2020-04-20 | 2020-04-21 |  | 6d |  |
| 32 |  | 制定沟通管理计划 | 2d | 2020-04-20 | 2020-04-21 | 30 | 6d |  |
| 33 | 2.7 | **规划采购** | 7d | 2020-04-14 | 2020-04-22 |  | 1d |  |
| 34 |  | 自制外购分析 | 2d | 2020-04-14 | 2020-04-15 | 17 | 1d |  |
| 35 |  | 制定采购文件 | 5d | 2020-04-16 | 2020-04-22 | 34 | 1d |  |
| 36 | 2.8 | **规划风险** | 3d | 2020-04-24 | 2020-04-28 |  | 0d |  |
| 37 |  | 识别风险 | 1d | 2020-04-24 | 2020-04-24 | 15, 21, 25, 28, 33 | 0d |  |
| 38 |  | 风险分析 | 1d | 2020-04-27 | 2020-04-27 | 37 | 0d |  |
| 39 |  | 制定风险登记册 | 1d | 2020-04-28 | 2020-04-28 | 38 | 0d |  |
| 40 |  | 规划整合 | 1d | 2020-04-29 | 2020-04-29 | 39 | 0d |  |
| 41 | 3 | **执行与监控** | 23d | 2020-04-30 | 2020-06-01 |  | 0d |  |
| 42 |  | 组建项目团队 | 3d | 2020-04-30 | 2020-05-04 | 7 | 0d |  |
| 43 | 3.2 | **项目执行** | 12d | 2020-05-05 | 2020-05-20 |  | 6d |  |
| 44 | 3.2.1 | **用户模块** | 12d | 2020-05-05 | 2020-05-20 |  | 6d |  |
| 45 |  | 注册登录 | 1d | 2020-05-05 | 2020-05-05 | 42 | 6d |  |
| 46 |  | 首页 | 1d | 2020-05-06 | 2020-05-06 | 45 | 6d |  |
| 47 |  | 推荐系统 | 2d | 2020-05-07 | 2020-05-08 | 46 | 6d |  |
| 48 |  | 搜索相关 | 1d | 2020-05-11 | 2020-05-11 | 47 | 6d |  |
| 49 |  | 即时通讯 | 3d | 2020-05-12 | 2020-05-14 | 48 | 6d |  |
| 50 |  | 创建、阅览帖子 | 2d | 2020-05-15 | 2020-05-18 | 49 | 6d |  |
| 51 |  | 用户信息 | 2d | 2020-05-19 | 2020-05-20 | 50 | 6d |  |
| 52 | 3.2.2 | **管理员模块** | 8d | 2020-05-05 | 2020-05-14 |  | 10d |  |
| 53 |  | 信息审核 | 2d | 2020-05-05 | 2020-05-06 | 42 | 10d |  |
| 54 |  | 广告发布 | 2d | 2020-05-07 | 2020-05-08 | 53 | 10d |  |
| 55 |  | 统计分析 | 1d | 2020-05-11 | 2020-05-11 | 54 | 10d |  |
| 56 |  | 备份 | 3d | 2020-05-12 | 2020-05-14 | 55 | 10d |  |
| 57 | 3.3 | **项目监控** | 3d | 2020-05-05 | 2020-05-07 |  | 17d |  |
| 58 |  | 各项指标监控 | 1d | 2020-05-05 | 2020-05-05 | 42 | 17d |  |
| 59 |  | 监控评审 | 1d | 2020-05-06 | 2020-05-06 | 58 | 17d |  |
| 60 |  | 变更评审 | 1d | 2020-05-07 | 2020-05-07 | 59 | 17d |  |
| 61 |  | 例会 | 1d | 2020-05-05 | 2020-05-05 | 42 | 19d |  |
| 62 | 3.4 | **管理干系人** | 1d | 2020-05-05 | 2020-05-05 |  | 19d |  |
| 63 |  | 发布项目信息 | 1d | 2020-05-05 | 2020-05-05 | 42 | 19d |  |
| 64 |  | 报告监控指标 | 1d | 2020-05-05 | 2020-05-05 | 42 | 19d |  |
| 65 |  | 干系人沟通 | 1d | 2020-05-05 | 2020-05-05 | 42 | 19d |  |
| 66 | 3.5 | **团队建设** | 1d | 2020-05-05 | 2020-05-05 |  | 19d |  |
| 67 |  | 培训 | 1d | 2020-05-05 | 2020-05-05 | 42 | 19d |  |
| 68 |  | 娱乐活动 | 1d | 2020-05-05 | 2020-05-05 | 42 | 19d |  |
| 69 |  | 沟通 | 1d | 2020-05-05 | 2020-05-05 | 42 | 19d |  |
| 70 |  | 信息资源收集 | 20d | 2020-05-05 | 2020-06-01 | 42 | 0d |  |

| ID | WBS | Task | Duration | Start | Finish | Predecessors | Total float |
| --- | --- | --- | --- | --- | --- | --- | --- |
| 71 |  | 项目验收 | 1d | 2020-05-21 | 2020-05-21 | 43 | 6d |
| 72 | 4 | **收尾** | 1d | 2020-05-22 | 2020-05-22 |  | 6d |
| 73 |  | 项目终验 | 1d | 2020-05-22 | 2020-05-22 | 71 | 6d |
| 74 |  | 结束采购 | 1d | 2020-05-22 | 2020-05-22 | 71 | 6d |
| 75 |  | 项目内部收尾 | 1d | 2020-05-22 | 2020-05-22 | 71 | 6d |

## Version 2 (saved 2020-04-03)

Note of the change: liu

Last finish stays 2020-06-01.

Removed: 24 形成范围基准
